# PRD2018-G10-甘特图v0.6

How a schedule from MS Project changed from version to version. A marks actual dates.

## Version 1 (saved 2018-12-08)

Note of the change: Update PRD2018-G10-甘特图.mpp

| ID | WBS | Task | Duration | Start | Finish | Predecessors | Complete | Total float |
| --- | --- | --- | --- | --- | --- | --- | --- | --- |
| 1 | 1 | **软件工程系列课程教学辅助网站** | 273d | 2018-09-19 19:00 | 2019-01-22 09:00 |  | 24% | 0d |
| 2 | 1.1 | **需求工程项目启动** | 18h | 2018-09-19 19:00 | 2018-09-23 09:00 |  | 45% |  |
| 3 |  | 人员召集 | 1h | 2018-09-19 08:00 A | 2018-09-19 09:00 |  |  |  |
| 4 |  | 确定小组名单 | 1h | 2018-09-19 08:00 A | 2018-09-19 09:00 | 3 |  |  |
| 5 |  | 启动会议 | 1h | 2018-09-22 08:00 | 2018-09-22 09:00 | 4 |  |  |
| 6 |  | 课题选定 | 4h | 2018-09-23 08:00 A | 2018-09-23 12:00 | 5 | 25% |  |
| 7 | 1.1.5 | **软件环境配置** | 22h | 2018-10-01 08:00 A | 2018-10-03 09:00 |  | 50% |  |
| 8 |  | OFFICE软件安装 | 2h | 2018-10-01 08:00 A | 2018-10-01 10:00 | 6 | 50% |  |
| 9 |  | 原型制作工具安装 | 2h | 2018-10-02 08:00 A | 2018-10-02 10:00 | 6 | 50% |  |
| 10 |  | 配置管理工具安装 | 2h | 2018-10-03 08:00 A | 2018-10-03 10:00 | 6 | 50% |  |
| 11 | 1.1.6 | **知识准备** | 197h | 2018-10-12 08:00 A | 2018-12-27 09:00 |  | 56% |  |
| 12 |  | 翻转：UML概述 | 2h | 2018-10-12 08:00 A | 2018-10-12 10:00 A | 8 | 100% |  |
| 13 |  | 翻转：UML工具 | 2h | 2018-10-20 19:00 A | 2018-10-21 02:00 A | 12 | 100% |  |
| 14 |  | 翻转：UML基础I | 2h | 2018-10-28 08:00 A | 2018-10-28 10:00 A | 13 | 100% |  |
| 15 |  | 翻转：UML界面原型 | 5h | 2018-11-02 08:00 A | 2018-11-02 13:00 | 14 | 60% |  |
| 16 |  | 翻转：UML基础III | 3h | 2018-12-20 08:00 | 2018-12-20 11:00 | 15 |  |  |
| 17 |  | 翻转：UML基础IV | 2h | 2018-12-27 08:00 | 2018-12-27 10:00 | 16 |  |  |
| 18 | 1.2 | **需求工程项目计划** | 173h | 2018-09-26 08:00 | 2018-12-07 09:00 |  | 43% |  |
| 19 | 1.2.1 | **软件需求工程项目计划** | 22h | 2018-10-06 08:00 A | 2018-10-07 09:00 | 6 | 52% |  |
| 20 |  | 范围管理计划 | 3h | 2018-10-06 08:00 A | 2018-10-06 11:00 | 6 | 67% |  |
| 21 |  | 风险管理计划 | 3h | 2018-10-06 08:00 A | 2018-10-06 11:00 | 6 | 67% |  |
| 22 |  | 成本管理计划 | 3h | 2018-10-06 08:00 A | 2018-10-06 11:00 | 6 | 33% |  |
| 23 |  | 沟通管理计划 | 3h | 2018-10-07 08:00 A | 2018-10-07 11:00 | 6 | 67% |  |
| 24 |  | 配置管理计划 | 3h | 2018-10-07 08:00 A | 2018-10-07 11:00 | 6 | 67% |  |
| 25 |  | 进度管理计划 | 3h | 2018-10-07 08:00 A | 2018-10-07 11:00 | 6, 29 | 67% |  |
| 26 |  | 人力资源管理计划 | 3h | 2018-09-23 19:00 | 2018-09-23 22:00 | 6 |  |  |
| 27 |  | 质量管理计划 | 3h | 2018-10-07 08:00 A | 2018-10-07 11:00 | 6 | 80% |  |
| 28 |  | 合并文档 | 2h | 2018-10-08 19:00 | 2018-10-08 21:00 | 20, 21, 22, 23, 24, 25, 26, 27 |  |  |
| 29 |  | 甘特图初版 | 3h | 2018-09-29 08:00 A | 2018-09-29 21:00 | 6 | 50% |  |
| 30 |  | WBS | 2h | 2018-10-20 08:00 A | 2018-10-20 10:00 | 29 | 50% |  |
| 31 |  | OBS | 2h | 2018-10-21 08:00 A | 2018-10-21 10:00 | 19 | 40% |  |
| 32 | 1.2.5 | **可行性分析** | 141d | 2018-10-08 19:00 | 2018-12-05 12:00 | 19 | 45% | 0d |
| 33 | 1.2.5.1 | **可行性分析初稿** | 22h | 2018-10-13 08:00 A | 2018-10-14 08:00 |  | 38% |  |
| 34 |  | 经济可行性分析 | 2h | 2018-10-13 08:00 A | 2018-10-13 10:00 | 19 | 50% |  |
| 35 |  | 法律可行性分析 | 2h | 2018-10-08 19:00 | 2018-10-08 21:00 | 19 |  |  |
| 36 |  | 技术可行性分析 | 2h | 2018-10-13 08:00 A | 2018-10-13 10:00 | 19 | 50% |  |
| 37 |  | 操作可行性分析 | 2h | 2018-10-13 08:00 A | 2018-10-13 10:00 | 19 | 50% |  |
| 38 |  | 可行性分析重做 | 4h | 2018-12-05 08:00 A | 2018-12-05 12:00 | 34, 35, 36, 37, 19 | 60% |  |
| 39 |  | 编写项目章程 | 3h | 2018-10-19 08:00 A | 2018-12-08 20:24 | 32 | 53% |  |
| 40 |  | 需求计划第一次正式评审 | 1h | 2018-10-08 19:00 | 2018-10-08 20:00 | 19 |  |  |
| 41 | 1.2.8 | **需求计划第二次正式评审** | 1h | 2018-12-05 08:00 A | 2018-12-05 09:00 | 40 | 16% |  |
| 42 |  | 范围管理计划修改 | 2h | 2018-12-08 08:00 | 2018-12-08 10:00 | 20 |  |  |
| 43 |  | 进度管理计划修改25 | 3h | 2018-12-07 08:00 | 2018-12-07 11:00 | 25 |  |  |
| 44 |  | 配置管理计划修改 | 2h | 2018-12-05 08:00 A | 2018-12-05 10:00 | 24 | 80% |  |
| 45 |  | 风险管理计划修改 | 1h | 2018-12-06 08:00 | 2018-12-06 09:00 | 21 |  |  |
| 46 |  | 成本管理计划 | 2h | 2018-12-05 08:00 | 2018-12-05 10:00 | 22 |  |  |
| 47 |  | 项目经理变更 | 1h | 2018-12-05 08:00 | 2018-12-05 09:00 | 39, 41 |  |  |
| 48 |  | 正式发布软件需求工程项目计划 | 1h | 2018-12-07 08:00 A | 2018-12-07 09:00 A | 41 | 100% |  |
| 49 | 1.3 | **需求工程执行过程** | 150h | 2018-11-23 08:00 | 2019-01-22 09:00 |  | 4% |  |
| 50 | 1.3.1 | **需求开发过程** | 84h | 2018-11-30 08:00 | 2018-12-31 09:00 |  | 6% |  |
| 51 | 1.3.1.1 | **需求获取** | 32h | 2018-12-04 08:00 A | 2018-12-12 09:00 |  | 15% |  |
| 52 |  | 与杨枨老师进行访谈 | 0.5h | 2018-12-04 08:00 A | 2018-12-04 08:30 A | 40 | 100% |  |
| 53 |  | 上下文图 | 1h | 2018-12-05 08:00 A | 2018-12-05 09:00 | 52 | 50% |  |
| 54 |  | 关联图 | 1h | 2018-12-06 08:00 A | 2018-12-06 09:00 | 52 | 50% |  |
| 55 |  | 编写项目愿景与范围文档 | 5h | 2018-12-08 19:00 A | 2018-12-09 21:00 | 52, 48, 54, 53 | 32% |  |
| 56 |  | 确定需求开发过程 | 2h | 2018-12-09 19:00 | 2018-12-09 21:00 | 55 |  |  |
| 57 |  | 用例图 | 3h | 2018-12-08 08:00 | 2018-12-08 11:00 | 55 |  |  |
| 58 |  | 愿景与范围文档补充 | 3h | 2018-12-09 08:00 A | 2018-12-09 11:00 | 55 | 33% |  |
| 59 |  | 用户群分类 | 2h | 2018-12-09 21:00 | 2018-12-10 20:00 | 55 |  |  |
| 60 |  | 建立核心队伍 | 2h | 2018-12-09 20:00 | 2018-12-09 22:00 | 59 |  |  |
| 61 |  | 用户访谈 | 1d | 2018-12-10 20:00 | 2018-12-10 21:00 | 59 |  |  |
| 62 |  | 分析用户工作流程 | 4h | 2018-12-09 20:00 | 2018-12-10 21:00 | 59 |  |  |
| 63 |  | 用户问卷调查 | 1h | 2018-12-09 08:00 | 2018-12-09 09:00 |  |  |  |
| 64 |  | 分析调查结果 | 2h | 2018-12-09 19:00 | 2018-12-09 21:00 | 63 |  |  |
| 65 | 1.3.1.2 | **需求分析** | 48h | 2018-12-14 08:00 | 2018-12-26 09:00 |  |  |  |
| 66 |  | 分析可实现性 | 2h | 2018-12-14 19:00 | 2018-12-14 21:00 | 70 |  |  |
| 67 |  | 确定需求优先级 | 1h | 2018-12-17 08:00 | 2018-12-17 09:00 | 66 |  |  |
| 68 |  | 为需求建立模型 | 4h | 2018-12-17 19:00 | 2018-12-18 21:00 | 67 |  |  |
| 69 |  | 编写数据字典 | 4h | 2018-12-09 19:00 | 2018-12-10 20:00 | 58 |  |  |
| 70 |  | 界面原型绘制 | 4h | 2018-12-11 19:00 | 2018-12-12 21:00 | 62 |  |  |

| ID | WBS | Task | Duration | Start | Finish | Predecessors | Complete |
| --- | --- | --- | --- | --- | --- | --- | --- |
| 71 | 1.3.1.3 | **需求规范说明** | 24h | 2018-12-19 08:00 | 2018-12-21 09:00 | 65 |  |
| 72 |  | 采用软件需求规格模板 | 3h | 2018-12-19 08:00 | 2018-12-19 11:00 | 69 |  |
| 73 |  | 指明需求来源 | 2h | 2018-12-19 08:00 | 2018-12-19 10:00 | 72 |  |
| 74 |  | 为每一项需求注上标号 | 3h | 2018-12-19 08:00 | 2018-12-19 11:00 | 73 |  |
| 75 |  | 记录业务规范 | 3h | 2018-12-20 08:00 | 2018-12-20 11:00 | 74 |  |
| 76 |  | 记录非功能需求 | 2h | 2018-12-09 21:00 | 2018-12-10 20:00 | 63, 64 |  |
| 77 |  | 创建需求跟踪能力矩阵 | 4h | 2018-12-21 08:00 | 2018-12-21 12:00 | 75 |  |
| 78 |  | 编写软件需求规格说明书 | 5h | 2018-12-20 19:00 | 2018-12-22 20:00 | 75, 68 |  |
| 79 | 1.3.1.4 | **需求验证** | 33h | 2018-12-24 08:00 | 2018-12-30 09:00 | 71 |  |
| 80 |  | 审查需求文档 | 2h | 2018-12-24 08:00 | 2018-12-24 10:00 | 78 |  |
| 81 |  | 编写测试用例 | 2h | 2018-12-29 08:00 | 2018-12-29 10:00 | 78 |  |
| 82 |  | 编写用户手册 | 2h | 2018-12-29 08:00 | 2018-12-29 10:00 | 78 |  |
| 83 |  | 确定合格的标准 | 2h | 2018-12-21 19:00 | 2018-12-21 21:00 | 78 |  |
| 84 | 1.3.2 | **需求管理过程** | 45h | 2019-01-07 08:00 | 2019-01-18 10:00 |  |  |
| 85 |  | 进行变更影响分析 | 2h | 2018-12-22 19:00 | 2018-12-22 21:00 | 83 |  |
| 86 |  | 建立基线并控制需求集和版本 | 3h | 2018-12-22 21:00 | 2018-12-23 02:00 | 85 |  |
| 87 |  | 确定变更控制过程 | 3h | 2018-12-23 19:00 | 2018-12-23 22:00 | 85 |  |
| 88 |  | 建立变更控制委员会 | 3h | 2018-12-24 19:00 | 2018-12-25 20:00 | 87 |  |
| 89 |  | 跟踪每一项变更 | 3h | 2018-12-25 19:00 | 2018-12-26 20:00 | 88 |  |
| 90 |  | 维护变更历史记录 | 3h | 2018-12-23 19:00 | 2018-12-23 22:00 | 85 |  |
| 91 |  | 衡量需求稳定性 | 3h | 2018-12-23 20:00 | 2018-12-24 20:00 | 90 |  |
| 92 |  | 使用需求管理工具 | 3h | 2019-01-14 19:00 | 2019-01-15 20:00 | 91 |  |
| 93 |  | 发布需求变更文档 | 4h | 2019-01-15 19:00 | 2019-01-16 21:00 | 92, 89 |  |
| 94 | 1.4 | **项目控制过程** | 247d | 2018-09-29 08:00 A | 2019-01-12 09:00 |  | 50% |
| 95 |  | 第一次正式会议 | 1h | 2018-09-29 08:00 A | 2018-09-29 09:00 A | 6 | 100% |
| 96 |  | 第二次正式会议 | 1h | 2018-10-06 08:00 A | 2018-10-06 09:00 A | 95 | 100% |
| 97 |  | 第三次正式会议 | 1h | 2018-10-13 08:00 A | 2018-10-13 09:00 A | 96 | 100% |
| 98 |  | 第四次正式会议 | 1h | 2018-10-20 08:00 A | 2018-10-20 09:00 A | 97 | 100% |
| 99 |  | 第五次会议记录 | 1h | 2018-10-27 08:00 A | 2018-10-27 09:00 A | 98 | 100% |
| 100 |  | 第六次正式会议 | 1h | 2018-11-03 08:00 A | 2018-11-03 09:00 A | 99 | 100% |
| 101 |  | 第七次正式会议 | 1h | 2018-11-10 08:00 A | 2018-11-10 09:00 A | 100 | 100% |
| 102 |  | 第八次正式会议 | 1h | 2018-11-17 08:00 A | 2018-11-17 09:00 A | 101 | 100% |
| 103 |  | 第九次正式会议 | 1h | 2018-11-17 19:00 | 2018-11-17 20:00 | 102 |  |
| 104 |  | 第十次正式会议 | 1h | 2018-11-24 08:00 | 2018-11-24 09:00 | 103 |  |
| 105 |  | 第十一次正式会议 | 1h | 2018-12-01 08:00 | 2018-12-01 09:00 | 104 |  |
| 106 |  | 第十二次正式会议 | 1h | 2018-12-08 08:00 | 2018-12-08 09:00 | 105 |  |
| 107 |  | 第十三次正式会议 | 1h | 2018-12-08 19:00 | 2018-12-08 20:00 | 106 |  |
| 108 |  | 第十四次正式会议 | 1h | 2018-12-08 20:00 | 2018-12-08 21:00 | 107 |  |
| 109 |  | 第十五次正式会议 | 1h | 2018-12-09 19:00 | 2018-12-09 20:00 | 108 |  |
| 110 |  | 第十六次正式会议 | 1h | 2019-01-12 08:00 | 2019-01-12 09:00 | 109 |  |
| 111 | 1.5 | **项目收尾--评审** | 10h | 2019-01-20 08:00 | 2019-01-20 18:00 | 93 |  |
| 112 |  | 项目总结报告 | 5h | 2019-01-16 09:00 | 2019-01-16 14:00 | 93 |  |
| 113 |  | 散伙饭 | 3h | 2019-01-21 08:00 | 2019-01-21 11:00 |  |  |

## Version 2 (saved 2018-12-12)

Note of the change: Update PRD2018-G10-甘特图.mpp

Last finish stays 2019-01-22.

Changed:

| ID | Task | Start | Duration | Predecessors |
| --- | --- | --- | --- | --- |
| 1 | **软件工程系列课程教学辅助网站** | 2018-09-19 19:00 → 2018-09-19 08:00 A |  |  |
| 12 | 翻转：UML概述 |  | 2h → 1h |  |
| 14 | 翻转：UML基础I |  | 2h → 0h |  |
| 19 | **软件需求工程项目计划** | 2018-10-06 08:00 A → 2018-10-06 08:00 |  |  |
| 22 | 成本管理计划 |  | 3h → 2h |  |
| 30 | WBS |  | 2h → 1h |  |
| 32 | **可行性分析** | 2018-10-08 19:00 A |  |  |
| 33 | **可行性分析初稿** | 2018-10-13 08:00 A → 2018-10-13 08:00 |  |  |
| 38 | 可行性分析重做 |  |  | 34, 35, 36, 37, 19 → 34, 35, 36, 37 |

## Version 3 (saved 2018-12-12)

Note of the change: Update PRD2018-G10-甘特图.mpp

Last finish stays 2019-01-22. Complete tasks 13 → 22.

Added:

| ID | Task | Duration | Start | Finish | Predecessors | Resources |
| --- | --- | --- | --- | --- | --- | --- |
| 61 | 选择产品代表 | 2h | 2018-12-09 08:00 A | 2018-12-09 10:00 | 60 | 叶忠杰 |
| 63 | 确定使用实例 | 4h | 2018-12-10 19:00 | 2018-12-11 21:00 | 62 | 夏昌灏; 李俊 |
| 64 | 召开应用程序开发联系会议（JAD） | 2h | 2018-12-12 19:00 | 2018-12-12 21:00 | 63 | 叶忠杰; 吴荣欣 |
| 66 | 确定质量属性 | 2h | 2018-12-13 20:00 | 2018-12-14 20:00 | 65 | 李俊 |
| 67 | 检查问题报告 | 1h | 2018-12-14 20:00 | 2018-12-14 21:00 | 66 | 吴荣欣 |
| 68 | 需求重用 | 1h | 2018-12-15 19:00 | 2018-12-15 20:00 | 67 | 夏昌灏 |
| 71 | 绘制关联图 | 2h | 2018-12-15 20:00 | 2018-12-15 22:00 | 68, 69 | 叶忠杰 |
| 72 | 创建开发原型 | 4h | 2018-12-16 19:00 | 2018-12-17 20:00 | 71 | 黄浩峰; 夏昌灏 |

Removed: 57 用例图; 70 界面原型绘制; 76 记录非功能需求

Changed:

| ID | Task | Start | Finish | Duration | Complete | Predecessors | Other |
| --- | --- | --- | --- | --- | --- | --- | --- |
| 1 | **软件工程系列课程教学辅助网站** |  |  |  | 24% → 30% |  |  |
| 2 | **需求工程项目启动** |  |  |  | 45% → 93% |  |  |
| 3 | 人员召集 |  | 2018-09-19 09:00 A |  | 0% → 100% |  |  |
| 4 | 确定小组名单 |  | 2018-09-19 09:00 A |  | 0% → 100% |  |  |
| 5 | 启动会议 | 2018-09-22 08:00 A | 2018-09-22 09:00 A |  | 0% → 100% |  |  |
| 6 | 课题选定 |  | 2018-09-23 12:00 A |  | 25% → 100% |  |  |
| 7 | **软件环境配置** |  |  |  | 50% → 100% |  |  |
| 8 | OFFICE软件安装 |  | 2018-10-01 10:00 A |  | 50% → 100% |  |  |
| 9 | 原型制作工具安装 |  | 2018-10-02 10:00 A |  | 50% → 100% |  |  |
| 10 | 配置管理工具安装 |  | 2018-10-03 10:00 A |  | 50% → 100% |  |  |
| 11 | **知识准备** |  |  |  | 56% → 88% |  |  |
| 12 | 翻转：UML概述 |  |  | 1h → 2h |  |  |  |
| 14 | 翻转：UML基础I |  |  | 0h → 2h |  |  |  |
| 15 | 翻转：UML界面原型 |  | 2018-11-02 13:00 A |  | 60% → 100% |  |  |
| 16 | 翻转：UML基础III | 2018-12-20 08:00 A | 2018-12-20 11:00 A |  | 0% → 100% |  |  |
| 22 | 成本管理计划 |  |  | 2h → 3h |  |  |  |
| 29 | 甘特图 |  |  |  |  |  | was named 甘特图初版 |
| 30 | WBS |  |  | 1h → 2h |  |  |  |
| 39 | 编写项目章程 |  |  |  |  | 32 → 38, 30 |  |
| 40 | 需求计划第一次正式评审 | 2018-10-08 19:00 → 2018-10-09 19:00 (+1d) | 2018-10-08 20:00 → 2018-10-09 20:00 (+1d) |  |  | 19 → 28 |  |
| 41 | **需求计划第二次正式评审** | 2018-12-05 08:00 A → 2018-12-05 08:00 |  |  |  |  |  |
| 42 | 范围管理计划修改 | 2018-12-08 08:00 → 2018-10-08 19:00 (-61d) | 2018-12-08 10:00 → 2018-10-08 21:00 (-61d) |  |  |  |  |
| 43 | 进度管理计划修改25 | 2018-12-07 08:00 → 2018-10-08 19:00 (-60d) | 2018-12-07 11:00 → 2018-10-09 20:00 (-59d) |  |  |  |  |
| 45 | 风险管理计划修改 | 2018-12-06 08:00 → 2018-10-08 19:00 (-59d) | 2018-12-06 09:00 → 2018-10-08 20:00 (-59d) |  |  |  |  |
| 46 | 成本管理计划修改 | 2018-12-05 08:00 → 2018-10-08 19:00 (-58d) | 2018-12-05 10:00 → 2018-10-08 21:00 (-58d) |  |  |  | was named 成本管理计划 |
| 47 | 项目经理变更 | 2018-12-05 08:00 → 2018-12-08 20:24 (+3d) | 2018-12-05 09:00 → 2018-12-08 21:24 (+3d) |  |  |  |  |
| 48 | 正式发布软件需求工程项目计划 |  |  |  |  | 41 → 42, 43, 44, 45, 46, 47 |  |
| 49 | **需求工程执行过程** |  |  |  | 4% → 5% |  |  |
| 53 | 确定需求开发过程 | 2018-12-09 19:00 → 2018-12-08 21:24 (-1d) | 2018-12-09 21:00 → 2018-12-09 20:24 |  |  | 56 → 47, 52 |  |
| 54 | 上下文图 | 2018-12-05 08:00 A → 2018-12-06 08:00 A (+1d) | 2018-12-05 09:00 → 2018-12-06 09:00 (+1d) |  |  |  |  |
| 56 | 编写项目愿景与范围文档 | 2018-12-08 19:00 A → 2018-12-07 08:00 A (-1d) | 2018-12-09 21:00 → 2018-12-10 20:48 (+1d) |  |  | 52, 48, 55, 54 → 52, 48, 55, 54, 53 |  |
| 57 | 用户访谈 | 2018-12-10 20:00 → 2018-12-08 19:00 (-2d) | 2018-12-10 21:00 → 2018-12-08 20:00 (-2d) |  |  | 60 → 56 |  |
| 58 | 用户问卷调查 | 2018-12-09 08:00 → 2018-12-08 20:00 (-1d) | 2018-12-09 09:00 → 2018-12-08 21:00 (-1d) |  |  | none → 57 |  |
| 59 | 分析调查结果 | 2018-12-09 19:00 → 2018-12-08 21:00 (-1d) | 2018-12-09 21:00 → 2018-12-09 20:00 |  |  |  |  |
| 60 | 用户群分类 | 2018-12-09 21:00 → 2018-12-10 20:48 (+1d) | 2018-12-10 20:00 → 2018-12-11 20:48 (+1d) |  |  | 56 → 56, 59 |  |
| 62 | 建立核心队伍 | 2018-12-09 20:00 → 2018-12-09 19:00 | 2018-12-09 22:00 → 2018-12-09 21:00 |  |  | 60 → 61 |  |
| 65 | 分析用户工作流程 | 2018-12-09 20:00 → 2018-12-13 19:00 (+4d) | 2018-12-10 21:00 → 2018-12-13 20:00 (+3d) | 4h → 1h |  | 60 → 64 |  |
| 69 | 愿景与范围文档补充 |  | 2018-12-09 11:00 → 2018-12-11 20:48 (+2d) |  |  |  |  |
| 73 | 分析可实现性 | 2018-12-14 19:00 → 2018-12-17 20:00 (+3d) | 2018-12-14 21:00 → 2018-12-18 20:00 (+4d) |  |  | 界面原型绘制 → 72 |  |
| 76 | 编写数据字典 | 2018-12-09 19:00 → 2018-12-19 19:00 (+10d) | 2018-12-10 20:00 → 2018-12-20 21:00 (+10d) |  |  | 69 → 75 |  |
| 82 | 创建需求跟踪能力矩阵 | 2018-12-21 08:00 → 2018-12-20 19:00 (-1d) | 2018-12-21 12:00 → 2018-12-21 02:00 |  |  |  |  |
| 83 | 编写软件需求规格说明书 | 2018-12-20 19:00 → 2018-12-21 19:00 (+1d) | 2018-12-22 20:00 → 2018-12-22 22:00 |  |  | 81, 75 → 81, 75, 82 |  |
| 85 | 审查需求文档 | 2018-12-24 08:00 → 2018-12-22 20:00 (-2d) | 2018-12-24 10:00 → 2018-12-22 22:00 (-2d) |  |  |  |  |
| 86 | 编写测试用例 | 2018-12-29 08:00 → 2018-12-23 19:00 (-6d) | 2018-12-29 10:00 → 2018-12-23 21:00 (-6d) |  |  | 83 → 85 |  |
| 87 | 编写用户手册 | 2018-12-29 08:00 → 2018-12-23 21:00 (-6d) | 2018-12-29 10:00 → 2018-12-24 20:00 (-5d) |  |  | 83 → 86 |  |
| 88 | 确定合格的标准 | 2018-12-21 19:00 → 2018-12-24 20:00 (+3d) | 2018-12-21 21:00 → 2018-12-25 20:00 (+4d) |  |  | 83 → 87 |  |
| 91 | 建立基线并控制需求集和版本 |  |  |  |  |  | resources 叶忠杰; 黄浩峰 → 叶忠杰; 李俊 |
| 92 | 确定变更控制过程 |  |  |  |  | 90 → 91 |  |

## Version 4 (saved 2018-12-26)

Note of the change: Update PRD2018-G10-甘特图.mpp

Last finish stays 2019-01-22. Complete tasks 22 → 21.

Added:

| ID | Task | Duration | Start | Finish | Predecessors | Resources |
| --- | --- | --- | --- | --- | --- | --- |
| 53 | 第二次与客户代表杨枨老师进行访谈 | 1h | 2018-12-17 19:00 | 2018-12-17 20:00 | 52 | 黄浩峰; 李俊; 吴荣欣; 夏昌灏; 叶忠杰 |
| 54 | 第三次与客户代表杨枨老师进行访谈 | 1h | 2018-12-17 20:00 | 2018-12-17 21:00 | 53 | 黄浩峰; 李俊; 吴荣欣; 夏昌灏; 叶忠杰 |
| 67 | 与教师代表杨枨老师进行访谈 | 1h | 2018-12-18 19:00 | 2018-12-18 20:00 | 54 | 黄浩峰; 李俊; 吴荣欣; 夏昌灏; 叶忠杰 |

Changed:

| ID | Task | Start | Finish | Duration | Complete | Other |
| --- | --- | --- | --- | --- | --- | --- |
| 51 | **需求获取** | 2018-12-04 08:00 A → 2018-12-04 08:00 |  |  | 15% → 14% |  |
| 52 | 与客户代表杨枨老师进行访谈 | 2018-12-04 08:00 A → 2018-12-17 08:00 A (+13d) | 2018-12-04 08:30 A → 2018-12-17 09:00 (+13d) | 0.5h → 1h | 100% → 50% | was named 与杨枨老师进行访谈 |

## Version 5 (saved 2019-01-12)

Note of the change: Update PRD2018-G10-甘特图.mpp

Last finish stays 2019-01-22.

Added:

| ID | Task | Duration | Start | Finish | Predecessors | Resources |
| --- | --- | --- | --- | --- | --- | --- |
| 87 | SRS评审 | 1h | 2019-01-12 08:00 | 2019-01-12 09:00 | 86 | 黄浩峰; 李俊; 吴荣欣; 夏昌灏; 叶忠杰 |
| 119 | 团队建设 | 3h | 2018-12-29 20:00 | 2018-12-30 20:00 | 118 | 黄浩峰; 李俊; 吴荣欣; 夏昌灏; 叶忠杰 |

Changed:

| ID | Task | Start | Finish | Duration | Complete | Predecessors | Other |
| --- | --- | --- | --- | --- | --- | --- | --- |
| 1 | **软件工程系列课程教学辅助网站** |  |  |  | 30% → 25% |  |  |
| 49 | **需求工程执行过程** |  |  |  | 5% → 3% |  |  |
| 68 | 召开应用程序开发联系会议（JAD） |  |  |  |  |  | resources 叶忠杰; 吴荣欣 → 叶忠杰; 吴荣欣; 黄浩峰; 李俊; 夏昌灏 |
| 80 | **需求规范说明** |  | 2018-12-21 09:00 → 2019-01-12 09:00 (+22d) | 24h → 74h |  |  |  |
| 94 | 进行变更影响分析 | 2018-12-22 19:00 → 2019-01-05 08:00 (+14d) | 2018-12-22 21:00 → 2019-01-06 09:00 (+15d) | 2h → 23h |  |  |  |
| 95 | 建立基线并控制需求集和版本 | 2018-12-22 21:00 → 2019-01-06 08:00 (+15d) | 2018-12-23 02:00 → 2019-01-07 09:00 (+15d) | 3h → 23h |  |  |  |
| 96 | 确定变更控制过程 | 2018-12-23 19:00 → 2019-01-07 08:00 (+15d) | 2018-12-23 22:00 → 2019-01-07 09:00 (+15d) | 3h → 1h |  |  |  |
| 97 | 建立变更控制委员会 | 2018-12-24 19:00 → 2019-01-07 08:00 (+14d) | 2018-12-25 20:00 → 2019-01-07 11:00 (+13d) |  |  |  |  |
| 98 | 跟踪每一项变更 | 2018-12-25 19:00 → 2019-01-07 08:00 (+13d) | 2018-12-26 20:00 → 2019-01-07 11:00 (+12d) |  |  |  |  |
| 99 | 维护变更历史记录 | 2018-12-23 19:00 → 2019-01-08 08:00 (+16d) | 2018-12-23 22:00 → 2019-01-08 11:00 (+16d) |  |  |  |  |
| 100 | 衡量需求稳定性 | 2018-12-23 20:00 → 2019-01-08 08:00 (+16d) | 2018-12-24 20:00 → 2019-01-08 11:00 (+15d) |  |  |  |  |
| 101 | 使用需求管理工具 | 2019-01-14 19:00 → 2019-01-08 08:00 (-6d) | 2019-01-15 20:00 → 2019-01-08 11:00 (-7d) |  |  |  |  |
| 102 | 发布需求变更文档 | 2019-01-15 19:00 → 2019-01-11 08:00 (-4d) | 2019-01-16 21:00 → 2019-01-11 12:00 (-5d) |  |  |  |  |
| 103 | **项目控制过程** |  |  |  | 50% → 42% |  |  |
| 112 | 第九次正式会议 | 2018-11-17 19:00 → 2018-11-24 08:00 (+7d) | 2018-11-17 20:00 → 2018-11-24 09:00 (+7d) |  |  |  |  |
| 113 | 第十次正式会议 | 2018-11-24 08:00 → 2018-12-01 08:00 (+7d) | 2018-11-24 09:00 → 2018-12-01 09:00 (+7d) |  |  |  |  |
| 114 | 第十一次正式会议 | 2018-12-01 08:00 → 2018-12-08 08:00 (+7d) | 2018-12-01 09:00 → 2018-12-08 09:00 (+7d) |  |  |  |  |
| 116 | 第十三次正式会议 | 2018-12-08 19:00 → 2018-12-15 08:00 (+7d) | 2018-12-08 20:00 → 2018-12-15 09:00 (+7d) |  |  |  |  |
| 117 | 第十四次正式会议 | 2018-12-08 20:00 → 2018-12-29 08:00 (+21d) | 2018-12-08 21:00 → 2018-12-29 09:00 (+21d) |  |  |  |  |
| 118 | 第十五次正式会议 | 2018-12-09 19:00 → 2018-12-29 19:00 (+20d) | 2018-12-09 20:00 → 2018-12-29 20:00 (+20d) |  |  |  |  |
| 120 | 第十六次正式会议 | 2019-01-12 08:00 → 2019-01-06 19:00 (-6d) | 2019-01-12 09:00 → 2019-01-06 20:00 (-6d) |  |  | 118 → 119 |  |

## Version 6 (saved 2019-01-15)

Note of the change: Update PRD2018-G10-甘特图.mpp

Last finish 2019-01-22 → 2019-01-26 (+4d).

Added:

| ID | Task | Duration | Start | Finish | Predecessors | Constraint | Resources |
| --- | --- | --- | --- | --- | --- | --- | --- |
| 67 | 学生用户代表正式访谈 | 0.5h | 2018-12-18 19:00 | 2018-12-18 19:30 | 55 |  | 黄浩峰; 李俊; 吴荣欣; 夏昌灏; 叶忠杰 |
| 68 | 管理员用户代表正式访谈 | 1h | 2018-12-20 08:00 | 2018-12-20 09:00 | 55 |  | 黄浩峰; 李俊; 吴荣欣; 夏昌灏; 叶忠杰 |
| 70 | 第二次召开应用程序开发联系会议（JAD） | 0.5h | 2019-01-03 08:00 | 2019-01-03 08:30 | 65 |  | 叶忠杰; 吴荣欣; 黄浩峰; 李俊; 夏昌灏 |
| 89 | SRS组内评审 | 1h | 2019-01-11 08:00 | 2019-01-11 09:00 | 88 |  | 黄浩峰; 李俊; 吴荣欣; 夏昌灏; 叶忠杰 |
| 105 | 需求变更组内评审 | 1h | 2019-01-10 08:00 | 2019-01-10 09:00 | 104 |  | 黄浩峰; 李俊; 吴荣欣; 夏昌灏; 叶忠杰 |
| 107 | **设计阶段** | 41d | 2019-01-06 08:00 | 2019-01-15 09:00 |  |  |  |
| 108 | 测试计划 | 2h | 2019-01-11 19:00 | 2019-01-11 21:00 | 106 | start no earlier than 2019-01-11 08:00 | 李俊 |
| 109 | 培训计划 | 2h | 2019-01-11 19:00 | 2019-01-11 21:00 | 106 |  | 吴荣欣 |
| 110 | 系统维护计划 | 2h | 2019-01-11 19:00 | 2019-01-11 21:00 | 106 | start no earlier than 2019-01-11 08:00 | 李俊 |
| 111 | 安装部署计划 | 4h | 2019-01-11 19:00 | 2019-01-12 21:00 | 106 |  | 黄浩峰 |
| 112 | 软件概要设计说明 | 4h | 2019-01-11 19:00 | 2019-01-12 21:00 | 106 |  | 黄浩峰 |
| 132 | 改进文档 | 34h | 2019-01-12 19:00 | 2019-01-26 21:00 | 90 |  | 黄浩峰; 李俊; 吴荣欣; 夏昌灏; 叶忠杰 |
| 134 | 最终评审 | 1h | 2019-01-26 21:00 | 2019-01-26 22:00 | 132 |  | 黄浩峰; 李俊; 吴荣欣; 夏昌灏; 叶忠杰 |

Removed: 59 用户访谈

Changed:

| ID | Task | Start | Finish | Duration | Complete | Predecessors |
| --- | --- | --- | --- | --- | --- | --- |
| 1 | **软件工程系列课程教学辅助网站** |  | 2019-01-22 09:00 → 2019-01-26 22:00 (+4d) | 273d → 284d | 25% → 21% |  |
| 49 | **需求工程执行过程** |  |  |  | 3% → 6% |  |
| 55 | 确定需求开发过程 | 2018-12-08 21:24 → 2018-12-17 19:00 (+9d) | 2018-12-09 20:24 → 2018-12-17 21:00 (+8d) |  |  |  |
| 59 | 用户问卷调查 |  |  |  |  | 用户访谈 → none |
| 69 | 召开应用程序开发联系会议（JAD） | 2018-12-12 19:00 → 2018-12-28 08:00 (+16d) | 2018-12-12 21:00 → 2018-12-28 08:30 (+16d) | 2h → 0.5h |  |  |
| 71 | 分析用户工作流程 |  |  |  |  | 69 → 69, 70 |
| 90 | SRS评审 |  |  |  |  | 88 → 89 |
| 104 | 使用需求管理工具 | 2019-01-08 08:00 → 2019-01-08 19:00 | 2019-01-08 11:00 → 2019-01-09 20:00 (+1d) |  |  |  |
| 106 | 发布需求变更文档 | 2019-01-11 08:00 → 2019-01-10 19:00 (-1d) | 2019-01-11 12:00 → 2019-01-11 02:00 |  |  | 104, 101 → 104, 101, 105 |
| 113 | **项目控制过程** | 2018-09-29 08:00 A → 2018-09-29 08:00 |  |  | 42% → 14% |  |
| 114 | 第一次正式会议 | 2018-09-29 08:00 A → 2018-09-22 08:00 A (-7d) | 2018-09-29 09:00 A → 2018-09-22 09:00 A (-7d) |  |  |  |
| 115 | 第二次正式会议 | 2018-10-06 08:00 A → 2018-09-28 08:00 A (-8d) | 2018-10-06 09:00 A → 2018-09-28 09:00 A (-8d) |  |  |  |
| 124 | 第十一次正式会议 | 2018-12-08 08:00 → 2018-12-05 08:00 (-3d) | 2018-12-08 09:00 → 2018-12-05 09:00 (-3d) |  |  |  |
| 125 | 第十二次正式会议 | 2018-12-08 08:00 → 2018-12-07 08:00 (-1d) | 2018-12-08 09:00 → 2018-12-07 09:00 (-1d) |  |  |  |
| 126 | 第十三次正式会议 | 2018-12-15 08:00 → 2018-12-08 19:00 (-7d) | 2018-12-15 09:00 → 2018-12-08 20:00 (-7d) |  |  |  |
| 127 | 第十四次正式会议 | 2018-12-29 08:00 → 2018-12-21 08:00 (-8d) | 2018-12-29 09:00 → 2018-12-21 09:00 (-8d) |  |  |  |
| 128 | 第十五次正式会议 | 2018-12-29 19:00 → 2018-12-28 08:00 (-1d) | 2018-12-29 20:00 → 2018-12-28 09:00 (-1d) |  |  |  |
| 129 | 团队建设 | 2018-12-29 20:00 → 2018-12-29 09:00 | 2018-12-30 20:00 → 2018-12-29 09:00 (-1d) | 3h → 0h |  |  |
| 130 | 第十六次正式会议 | 2019-01-06 19:00 → 2019-01-04 08:00 (-2d) | 2019-01-06 20:00 → 2019-01-04 09:00 (-2d) |  |  |  |
| 131 | **项目收尾--评审** | 2019-01-20 08:00 → 2019-01-09 08:00 (-11d) | 2019-01-20 18:00 → 2019-01-17 09:00 (-3d) | 10h → 38h |  |  |
| 133 | 项目总结报告 | 2019-01-16 09:00 → 2019-01-11 19:00 (-5d) | 2019-01-16 14:00 → 2019-01-12 22:00 (-4d) |  |  |  |
| 135 | 散伙饭 | 2019-01-21 08:00 → 2019-01-13 19:00 (-8d) | 2019-01-21 11:00 → 2019-01-13 22:00 (-8d) |  |  | none → 133 |

## Version 7 (saved 2019-01-15)

Note of the change: Update PRD2018-G10-甘特图.mpp

Last finish 2019-01-26 → 2019-01-22 (-4d).

Added:

| ID | Task | Duration | Start | Finish | Predecessors | Resources |
| --- | --- | --- | --- | --- | --- | --- |
| 59 | 制作界面原型 | 36h | 2018-12-18 20:00 | 2019-01-20 20:00 | 54, 67, 68, 69, 70 | 夏昌灏; 叶忠杰 |
| 70 | 游客代表正式访谈 | 1h | 2018-12-18 19:00 | 2018-12-18 20:00 | 55 | 黄浩峰; 李俊; 吴荣欣; 夏昌灏; 叶忠杰 |
| 89 | 记录非功能需求 | 1h | 2018-12-22 20:00 | 2018-12-22 21:00 | 85 | 叶忠杰 |
| 136 | 整理需求规格说明 | 2h | 2019-01-11 19:00 | 2019-01-11 21:00 | 109 | 夏昌灏 |
| 137 | 整理愿景和范围文档 | 2h | 2019-01-11 19:00 | 2019-01-11 21:00 | 109 | 黄浩峰 |
| 138 | 修改界面原型 | 2h | 2019-01-11 19:00 | 2019-01-11 21:00 | 109 | 叶忠杰 |
| 141 | 修改文档 | 3h | 2019-01-16 19:00 | 2019-01-17 01:00 | 140 | 黄浩峰; 李俊; 吴荣欣; 夏昌灏; 叶忠杰 |
| 142 | 移交正式文档 | 0.5h | 2019-01-17 19:00 | 2019-01-17 19:30 | 141 | 黄浩峰; 李俊; 吴荣欣; 夏昌灏; 叶忠杰 |

Changed:

| ID | Task | Start | Finish | Duration | Complete | Predecessors | Other |
| --- | --- | --- | --- | --- | --- | --- | --- |
| 1 | **软件工程系列课程教学辅助网站** |  | 2019-01-26 22:00 → 2019-01-22 09:00 (-4d) | 284d → 232d | 21% → 23% |  |  |
| 11 | **知识准备** |  |  | 197h → 177h |  |  |  |
| 16 | 翻转：UML基础III |  |  |  |  |  | resources 吴荣欣; 李俊 → 李俊; 黄浩峰 |
| 24 | 配置管理计划 |  |  |  |  |  | resources 夏昌灏 → 吴荣欣 |
| 44 | 配置管理计划修改 |  |  |  |  |  | resources 夏昌灏 → 吴荣欣 |
| 45 | 风险管理计划修改 |  |  |  |  |  | resources 夏昌灏 → 吴荣欣 |
| 49 | **需求工程执行过程** |  |  | 150h → 109h | 6% → 7% |  |  |
| 50 | **需求开发过程** |  |  | 84h → 54h | 6% → 4% |  |  |
| 51 | **需求获取** |  |  |  | 14% → 7% |  |  |
| 53 | 第二次与客户代表杨枨老师进行访谈 | 2018-12-17 19:00 → 2018-12-18 08:00 (+1d) | 2018-12-17 20:00 → 2018-12-18 09:00 (+1d) |  |  |  |  |
| 54 | 第三次与客户代表杨枨老师进行访谈 | 2018-12-17 20:00 → 2018-12-19 08:00 (+2d) | 2018-12-17 21:00 → 2018-12-19 09:00 (+2d) |  |  |  |  |
| 58 | 编写项目愿景与范围文档 |  | 2018-12-10 20:48 → 2019-01-05 20:24 (+26d) |  |  |  |  |
| 60 | 用户问卷调查 | 2018-12-08 20:00 → 2018-12-19 20:24 (+11d) | 2018-12-08 21:00 → 2018-12-20 19:24 (+12d) |  |  | none → 58 |  |
| 66 | 确定使用实例 | 2018-12-10 19:00 → 2018-12-09 21:00 (-1d) | 2018-12-11 21:00 → 2018-12-11 20:00 |  |  |  |  |
| 69 | 管理员用户代表正式访谈 | 2018-12-20 08:00 → 2018-12-18 19:00 (-2d) | 2018-12-20 09:00 → 2018-12-18 20:00 (-2d) |  |  |  |  |
| 71 | 召开应用程序开发联系会议（JAD） | 2018-12-28 08:00 → 2019-01-03 20:00 (+6d) | 2018-12-28 08:30 → 2019-01-03 20:30 (+6d) |  |  | 66 → 59 |  |
| 72 | 第二次召开应用程序开发联系会议（JAD） | 2019-01-03 08:00 → 2019-01-03 20:30 | 2019-01-03 08:30 → 2019-01-03 21:00 |  |  | 66 → 71 |  |
| 73 | 分析用户工作流程 | 2018-12-13 19:00 → 2019-01-04 19:00 (+22d) | 2018-12-13 20:00 → 2019-01-04 20:00 (+22d) |  |  | 71, 72 → 72, 66 |  |
| 76 | 需求重用 |  | 2018-12-15 20:00 → 2018-12-15 21:00 | 1h → 2h |  |  | resources 夏昌灏 → 李俊; 吴荣欣 |
| 77 | **需求分析** |  |  | 48h → 30h |  |  |  |
| 83 | 为需求建立模型 |  |  |  |  |  | resources 黄浩峰; 李俊 → 吴荣欣; 李俊 |
| 84 | **需求规范说明** |  |  | 74h → 38h |  |  |  |
| 85 | 采用软件需求规格模板 | 2018-12-19 08:00 → 2018-12-21 19:00 (+2d) | 2018-12-19 11:00 → 2018-12-22 20:00 (+3d) |  |  |  |  |
| 87 | 为每一项需求注上标号 | 2018-12-19 08:00 → 2018-12-22 21:00 (+3d) | 2018-12-19 11:00 → 2019-01-05 20:00 (+17d) |  |  | 86 → 86, 89 |  |
| 88 | 记录业务规范 |  |  |  |  |  | resources 黄浩峰; 吴荣欣 → 吴荣欣 |
| 94 | **需求验证** |  |  | 33h → 20h |  |  |  |
| 96 | 编写测试用例 |  |  |  |  |  | resources 吴荣欣; 黄浩峰 → 吴荣欣 |
| 97 | 编写用户手册 |  | 2018-12-24 20:00 → 2019-01-04 21:00 (+11d) |  |  |  |  |
| 99 | **需求管理过程** |  |  | 45h → 42h |  |  |  |
| 100 | 进行变更影响分析 |  | 2019-01-06 09:00 → 2019-01-05 11:00 (-1d) | 23h → 3h |  |  | resources 夏昌灏 → 黄浩峰 |
| 101 | 建立基线并控制需求集和版本 |  | 2019-01-07 09:00 → 2019-01-06 11:00 (-1d) | 23h → 3h |  |  | resources 叶忠杰; 李俊 → 吴荣欣; 李俊 |
| 102 | 确定变更控制过程 |  |  |  |  |  | resources 夏昌灏; 吴荣欣 → 黄浩峰; 吴荣欣 |
| 103 | 建立变更控制委员会 |  |  |  |  |  | resources 叶忠杰; 李俊 → 黄浩峰; 叶忠杰 |
| 104 | 跟踪每一项变更 |  |  |  |  |  | resources 黄浩峰 → 李俊; 叶忠杰 |
| 105 | 维护变更历史记录 |  |  |  |  |  | resources 叶忠杰; 吴荣欣 → 黄浩峰; 李俊 |
| 106 | 衡量需求稳定性 |  |  |  |  |  | resources 李俊; 夏昌灏 → 李俊; 黄浩峰 |
| 110 | **设计阶段** |  |  | 41d → 38d |  |  |  |
| 114 | 安装部署计划 |  | 2019-01-12 21:00 → 2019-01-11 21:00 (-1d) | 4h → 2h |  |  |  |
| 116 | **项目控制过程** |  |  | 247d → 209d | 14% → 23% |  |  |
| 132 | 团队建设 |  | 2018-12-29 09:00 → 2018-12-29 10:00 | 0h → 1h |  |  |  |
| 134 | **项目收尾--评审** |  |  | 38h → 35h |  | 109 → 109, 111, 112, 113, 114, 115 |  |
| 135 | **整理文档** |  | 2019-01-26 21:00 → 2019-01-19 21:00 (-7d) | 34h → 17h |  |  | was named 改进文档 |
| 140 | 最终评审 | 2019-01-26 21:00 → 2019-01-15 19:00 (-11d) | 2019-01-26 22:00 → 2019-01-15 20:00 (-11d) |  |  | 135 → 135, 139 |  |
| 143 | 散伙饭 | 2019-01-13 19:00 → 2019-01-17 19:30 (+4d) | 2019-01-13 22:00 → 2019-01-18 20:30 (+5d) |  |  | 139 → 142 |  |

## Version 8 (saved 2019-01-15)

Note of the change: Update PRD2018-G10-甘特图.mpp

Last finish stays 2019-01-22.

Changed:

| ID | Task | Duration |
| --- | --- | --- |
| 84 | **需求规范说明** | 38h → 40h |
| 94 | **需求验证** | 20h → 22h |

## Version 9 (saved 2019-01-15)

Note of the change: Update PRD2018-G10-甘特图.mpp

Last finish stays 2019-01-22.

Added:

| ID | Task | Duration | Start | Finish | Predecessors | Resources |
| --- | --- | --- | --- | --- | --- | --- |
| 134 | 第十七次正式会议记录 | 1h | 2019-01-11 08:00 | 2019-01-11 09:00 | 133 | 黄浩峰; 李俊; 吴荣欣; 夏昌灏; 叶忠杰 |

Changed:

| ID | Task | Start | Finish | Complete |
| --- | --- | --- | --- | --- |
| 1 | **软件工程系列课程教学辅助网站** | 2018-09-19 08:00 A → 2018-09-19 19:00 |  |  |
| 18 | **需求工程项目计划** | 2018-09-26 08:00 A |  |  |
| 19 | **软件需求工程项目计划** | 2018-10-06 08:00 A |  |  |
| 32 | **可行性分析** | 2018-10-08 19:00 A → 2018-10-08 19:00 |  |  |
| 33 | **可行性分析初稿** | 2018-10-13 08:00 A |  |  |
| 41 | **需求计划第二次正式评审** | 2018-12-05 08:00 A |  |  |
| 116 | **项目控制过程** |  |  | 23% → 22% |
| 133 | 第十六次正式会议 | 2019-01-04 08:00 → 2019-01-04 19:00 | 2019-01-04 09:00 → 2019-01-04 20:00 |  |

## Version 10 (saved 2019-01-16)

Note of the change: Update PRD2018-G10-甘特图.mpp

Last finish stays 2019-01-22.

Added:

| ID | Task | Duration | Start | Finish | Predecessors | Resources |
| --- | --- | --- | --- | --- | --- | --- |
| 40 | 编写总体计划 | 3h | 2018-10-14 19:00 | 2018-10-14 22:00 | 33 | 黄浩峰; 李俊; 吴荣欣 |
| 41 | QA计划 | 3h | 2018-10-15 19:00 | 2018-10-16 20:00 | 40 | 黄浩峰; 李俊; 吴荣欣 |

Changed:

| ID | Task | Start | Duration | Complete | Predecessors | Other |
| --- | --- | --- | --- | --- | --- | --- |
| 1 | **软件工程系列课程教学辅助网站** |  |  | 23% → 21% |  |  |
| 18 | **需求工程项目计划** | 2018-09-26 08:00 A → 2018-09-26 08:00 |  | 43% → 34% |  |  |
| 31 | OBS | 2018-10-21 08:00 A → 2018-10-21 08:00 |  | 40% → 0% |  | resources 夏昌灏; 叶忠杰 → 吴荣欣; 叶忠杰 |
| 32 | **可行性分析** | 2018-10-08 19:00 → 2018-10-13 08:00 A (+5d) | 141d → 131d | 45% → 25% |  |  |
| 38 | 可行性分析重做 | 2018-12-05 08:00 A → 2018-12-05 08:00 |  | 60% → 0% |  | resources 叶忠杰; 吴荣欣 → 吴荣欣; 夏昌灏 |
| 39 | 编写项目章程 |  |  |  | 38, 30 → 38, 30, 40, 41 |  |
| 57 | 确定需求开发过程 |  |  |  |  | resources 吴荣欣; 夏昌灏 → 吴荣欣; 李俊 |
| 62 | 用户问卷调查 |  |  |  |  | resources 叶忠杰; 李俊 → 吴荣欣; 李俊 |
| 64 | 用户群分类 |  |  |  |  | resources 李俊; 夏昌灏 → 李俊; 黄浩峰 |
| 99 | 编写用户手册 | 2018-12-23 21:00 → 2019-01-04 19:00 (+12d) |  |  |  | resources 夏昌灏; 叶忠杰 → 李俊; 黄浩峰 |
| 100 | 确定合格的标准 |  |  |  |  | resources 夏昌灏 → 吴荣欣 |
